# ProjectPlan_1

How a schedule from MS Project changed from version to version. A marks actual dates.

## Version 1 (saved 2013-11-19, file ProjectPlan_1_Sam.mpp)

Note of the change: project plan

| ID | WBS | Task | Duration | Start | Finish | Predecessors | Complete | Total float |
| --- | --- | --- | --- | --- | --- | --- | --- | --- |
| 1 | 1 | **Modelling** | 26d | 2013-09-03 A | 2013-10-08 A |  | 100% |  |
| 2 | 1.1 | **Analysis** | 5.38d | 2013-09-03 A | 2013-09-10 A |  | 100% |  |
| 3 |  | Requirements Documentation | 0d | 2013-09-03 A | 2013-09-03 A |  | 100% |  |
| 4 |  | Determine Use Cases | 17.5h | 2013-09-03 A | 2013-09-10 A | 3 | 100% |  |
| 5 |  | Draft : Database and ERD | 6h | 2013-09-09 A | 2013-09-10 A | 3 | 100% |  |
| 6 |  | Draft : Prototype | 9h | 2013-09-04 A | 2013-09-10 A | 3FS+2d | 100% |  |
| 7 | 1.2 | **Design** | 15.62d | 2013-09-10 A | 2013-10-01 A |  | 100% |  |
| 8 |  | Design Interface | 28h | 2013-09-10 A | 2013-09-20 A | 2 | 100% |  |
| 9 |  | Design Database to Specification | 3h | 2013-09-10 A | 2013-09-10 A | 5 | 100% |  |
| 10 |  | Design Modules and Architecture | 17h | 2013-09-10 A | 2013-09-17 A | 2 | 100% |  |
| 11 |  | Create Prototype : Limited Functionality | 17h | 2013-09-23 A | 2013-09-27 A | 6, 8 | 100% |  |
| 12 |  | Prototype Signoff | 0d | 2013-09-27 A | 2013-09-27 A | 11 | 100% |  |
| 13 |  | Documentation : Software Requirements | 10h | 2013-09-30 A | 2013-10-01 A | 9FS+1d, 10FS+1d, 12FS+1d | 100% |  |
| 14 | 1.3 | **Development** | 4.31d | 2013-10-02 A | 2013-10-08 A |  | 100% |  |
| 15 |  | Finalise Use Cases | 7h | 2013-10-04 A | 2013-10-07 A | 7 | 100% |  |
| 16 |  | Finalise Flow Charts | 7h | 2013-10-07 A | 2013-10-08 A | 7 | 100% |  |
| 17 |  | Finalise Database | 3h | 2013-10-02 A | 2013-10-02 A | 7 | 100% |  |
| 18 |  | Application Template | 14h | 2013-10-04 A | 2013-10-08 A | 7FS+2d | 100% |  |
| 19 | 2 | **Development** | 16.44d | 2013-10-09 | 2013-11-01 |  |  | 0d |
| 20 |  | Build Application | 41h | 2013-10-09 | 2013-10-25 | 14 |  | 0d |
| 21 |  | Test Application | 10h | 2013-10-28 | 2013-10-29 | 20 |  | 0d |
| 22 |  | Documentation : Testing | 3h | 2013-10-30 | 2013-10-30 | 21 |  | 0d |
| 23 |  | Application Signoff | 1h | 2013-11-01 | 2013-11-01 | 22FS+1d, 20 |  | 0d |

## Version 2 (saved 2013-11-20, file ProjectPlan_1b_Sam.mpp)

Note of the change: project plan

Last finish 2013-11-01 → 2013-11-26 (+25d).

Changed:

| ID | Task | Start | Finish | Duration | Complete | Predecessors |
| --- | --- | --- | --- | --- | --- | --- |
| 1 | **Modelling** | 2013-09-03 A → 2013-08-28 A (-6d) | 2013-10-08 A → 2013-10-23 A (+15d) | 26d → 40d |  |  |
| 2 | **Analysis** | 2013-09-03 A → 2013-08-28 A (-6d) |  | 5.38d → 8.38d |  |  |
| 3 | Requirements Documentation | 2013-09-03 A → 2013-08-28 A (-6d) | 2013-09-03 A → 2013-08-28 A (-6d) |  |  |  |
| 5 | Draft : Database and ERD | 2013-09-09 A → 2013-09-04 A (-5d) | 2013-09-10 A → 2013-09-04 A (-6d) | 6h → 0h |  |  |
| 6 | Draft : Prototype |  | 2013-09-10 A → 2013-09-09 A (-1d) | 9h → 8.5h |  |  |
| 7 | **Design** |  | 2013-10-01 A → 2013-10-08 A (+7d) | 15.62d → 20.62d |  |  |
| 8 | Design Interface |  | 2013-09-20 A → 2013-09-16 A (-4d) | 28h → 15h |  |  |
| 9 | Design Database to Specification |  | 2013-09-10 A → 2013-09-16 A (+6d) | 3h → 15h |  |  |
| 10 | Design Modules and Architecture |  | 2013-09-17 A → 2013-09-16 A (-1d) | 17h → 15h |  |  |
| 13 | Documentation : Software Requirements |  | 2013-10-01 A → 2013-10-08 A (+7d) | 10h → 27h |  |  |
| 14 | **Development** | 2013-10-02 A → 2013-09-17 A (-15d) | 2013-10-08 A → 2013-10-23 A (+15d) | 4.31d → 26d |  |  |
| 15 | Finalise Use Cases | 2013-10-04 A → 2013-09-17 A (-17d) | 2013-10-07 A → 2013-09-17 A (-20d) | 7h → 0h |  |  |
| 16 | Finalise Flow Charts | 2013-10-07 A → 2013-09-17 A (-20d) | 2013-10-08 A → 2013-09-17 A (-21d) | 7h → 0h |  |  |
| 17 | Finalise Database | 2013-10-02 A → 2013-09-17 A (-15d) | 2013-10-02 A → 2013-09-17 A (-15d) | 3h → 0h |  |  |
| 18 | Application Template |  | 2013-10-08 A → 2013-10-23 A (+15d) | 14h → 51h |  |  |
| 19 | **Development** | 2013-10-09 → 2013-11-04 A (+26d) | 2013-11-01 → 2013-11-26 (+25d) | 16.44d → 16.7d | 0% → 63% |  |
| 20 | Build Application | 2013-10-09 → 2013-11-04 A (+26d) | 2013-10-25 → 2013-11-19 (+25d) |  | 0% → 80% |  |
| 21 | Test Application | 2013-10-28 → 2013-11-18 A (+21d) | 2013-10-29 → 2013-11-22 (+24d) |  | 0% → 10% |  |
| 22 | Documentation : Testing | 2013-10-30 → 2013-11-18 A (+19d) | 2013-10-30 → 2013-11-25 (+26d) |  | 0% → 30% |  |
| 23 | Application Signoff | 2013-11-01 → 2013-11-26 (+25d) | 2013-11-01 → 2013-11-26 (+25d) |  |  | 22FS+1d, 20 → 22FS+1d |
